# Relaunch der RZ-Webseite

How a schedule from MS Project changed from version to version. A marks actual dates.

## Version 1 (saved 2015-08-28)

Note of the change: Upload des Projektplans

| ID | WBS | Task | Duration | Start | Finish | Predecessors | Complete | Total float |
| --- | --- | --- | --- | --- | --- | --- | --- | --- |
| 1 | 1 | **Projektstart und Feldlegung des Projektumfanges** | 3d | 2015-05-08 A | 2015-05-12 A |  | 100% |  |
| 2 |  | Kick-Off Meeting mit den Stakeholdern | 1d | 2015-05-08 A | 2015-05-08 A |  | 100% |  |
| 3 |  | RZ-Mitarbeiterschulung (Imperia) | 1d | 2015-05-11 A | 2015-05-11 A | 2 | 100% |  |
| 4 |  | Festlegung des Projektumfangs mit Raphael Wimmer | 1d | 2015-05-12 A | 2015-05-12 A | 3 | 100% |  |
| 5 | 2 | **Anforderungsanalyse** | 83d | 2015-05-13 A | 2015-09-04 |  | 93% | 0d |
| 6 |  | Konkurrenzanalyse anderer deutschsprachiger RZ-Webseiten | 7d | 2015-05-13 A | 2015-05-21 A |  | 100% |  |
| 7 |  | Konkurrenzanalyse internationaler RZ-Webseiten | 7d | 2015-05-13 A | 2015-05-21 A |  | 100% |  |
| 8 |  | Einarbeitung in Piwik | 6d | 2015-05-22 A | 2015-05-29 A |  | 100% |  |
| 9 |  | Erstellung einer Sitemap der aktuellen Inhalte der Webseite | 5d | 2015-05-22 A | 2015-05-28 A |  | 100% |  |
| 10 |  | Hintergrundrecherche zum Crawlen von Webseiten | 1d | 2015-05-29 A | 2015-05-29 A |  | 100% |  |
| 11 |  | Analyse der Inhalte der aktuellen RZ-Webseite | 2w | 2015-06-15 A | 2015-06-26 A |  | 100% |  |
| 12 |  | Contextual Inquiry (Studierende + Mitarbeiter) | 2w | 2015-06-15 A | 2015-06-26 A |  | 100% |  |
| 13 |  | Piwik-Analyse | 2w | 2015-06-15 A | 2015-06-26 A |  | 100% |  |
| 14 |  | Erstellung des SRS-Templates | 2w | 2015-06-29 A | 2015-07-10 A |  | 100% |  |
| 15 |  | Besprechung und Verbesserung des SRS-Templats | 1w | 2015-07-13 A | 2015-07-17 A |  | 100% |  |
| 16 |  | Erstellung des Fragebogens | 2w | 2015-07-27 A | 2015-08-07 A |  | 100% |  |
| 17 |  | Überarbeitung des Fragebogens | 1w | 2015-08-10 A | 2015-08-14 A |  | 100% |  |
| 18 |  | Recherche über Online-Cardsorting | 3d | 2015-08-17 A | 2015-08-19 A |  | 100% |  |
| 19 |  | Vorbereitung des Online-Cardsorting | 1w | 2015-08-24 A | 2015-08-28 A |  | 100% |  |
| 20 |  | Auswertung des Fragebogens | 2d | 2015-08-31 | 2015-09-01 |  |  |  |
| 21 |  | Auswertung des Card Sortings | 2d | 2015-08-31 | 2015-09-01 |  |  |  |
| 22 |  | Zusammenfassung der bisher erlangten Ergebnisse | 3d | 2015-09-02 | 2015-09-04 |  |  |  |
| 23 | 3 | **Erstellung des Prototypen** | 5d | 2015-09-07 | 2015-09-11 |  |  | 0d |
| 24 |  | Erarbeitung eines neuen Konzepts | 3d | 2015-09-07 | 2015-09-09 |  |  |  |
| 25 |  | Implementierung des neuen Konzepts mit Hilfe von Imperia | 2d | 2015-09-10 | 2015-09-11 | 24 |  |  |
| 26 | 4 | **Test des Protoypen** | 12d | 2015-09-14 | 2015-09-30 |  |  | 0d |
| 27 |  | Erstellung der Testszenarien | 2d | 2015-09-14 | 2015-09-15 |  |  |  |
| 28 |  | Durchführung der Tests | 3d | 2015-09-16 | 2015-09-18 | 27 |  |  |
| 29 |  | Auswertung der Tets | 2d | 2015-09-21 | 2015-09-22 | 28 |  |  |
| 30 |  | Besprechung der Ergebnisse | 1d | 2015-09-23 | 2015-09-23 | 29 |  |  |
| 31 |  | Überarbeitung des Prototypen | 2d | 2015-09-24 | 2015-09-25 | 30 |  |  |
| 32 |  | Fertigstellung der Dokumente | 2d | 2015-09-28 | 2015-09-29 | 31 |  |  |
| 33 |  | Projektabgabe | 0d | 2015-09-30 | 2015-09-30 | 32 |  |  |

## Version 2 (saved 2015-08-31)

Note of the change: Update Projektplan und Zeiten aktualisiert

Last finish stays 2015-09-30. Complete tasks 17 → 16.

Added:

| ID | Task | Duration | Start | Finish | Predecessors | Resources |
| --- | --- | --- | --- | --- | --- | --- |
| 5 | Festlegung des Projektumfangs mit allen Beteiligten | 0d | 2015-05-13 A | 2015-05-13 A | 4 |  |
| 17 | Contextual Inquiry Mitarbeiter (Vorbereitung + Durchführung) | 6d | 2015-07-20 | 2015-07-27 |  | Alle Teammitglieder |
| 24 | Erstellen von Personas und Szenarien | 3d | 2015-09-02 | 2015-09-04 |  | Vogl |
| 26 | Fertigstellung und Abschluss der Anforderungsanalyse | 0d | 2015-09-04 | 2015-09-04 |  |  |
| 30 | Fertigstellung des Prototypen | 0d | 2015-09-11 | 2015-09-11 |  |  |
| 33 | Durchführung des Heuristic Walkthrough | 3d | 2015-09-14 | 2015-09-16 |  | Huth, Vogl |
| 38 | Zusammenfassung und Dokumentation der Ergebnisse der Tests | 1d | 2015-09-25 | 2015-09-25 |  | Alle Teammitglieder |
| 39 | Abschluss der Testphase | 0d | 2015-09-25 | 2015-09-25 |  |  |
| 40 | **Projektabschluss** | 3d | 2015-09-28 | 2015-09-30 |  |  |
| 41 | Zusammenführung aller bisher erstellten Dokumente zu einen Anforderungsdokument | 1d | 2015-09-28 | 2015-09-28 |  | Alle Teammitglieder |

Changed:

| ID | Task | Start | Finish | Duration | Complete | Predecessors | Other |
| --- | --- | --- | --- | --- | --- | --- | --- |
| 1 | **Projektstart und Feldlegung des Projektumfanges** |  | 2015-05-12 A → 2015-05-13 A (+1d) |  |  |  |  |
| 6 | **Anforderungsanalyse** |  |  |  | 93% → 78% |  |  |
| 7 | Konkurrenzanalyse anderer deutschsprachiger RZ-Webseiten |  | 2015-05-21 A → 2015-05-19 (-2d) | 7d → 5d | 100% → 80% |  |  |
| 8 | Konkurrenzanalyse internationaler RZ-Webseiten |  | 2015-05-21 A → 2015-05-19 A (-2d) | 7d → 5d |  |  |  |
| 9 | Einarbeitung in Piwik | 2015-05-22 A → 2015-05-20 A (-2d) | 2015-05-29 A → 2015-05-26 A (-3d) | 6d → 5d |  |  |  |
| 10 | Erstellung einer Sitemap der aktuellen Inhalte der Webseite | 2015-05-22 A → 2015-05-20 A (-2d) | 2015-05-28 A → 2015-05-26 A (-2d) |  |  |  |  |
| 11 | Hintergrundrecherche zum Crawlen von Webseiten | 2015-05-29 A → 2015-05-27 A (-2d) | 2015-05-29 A → 2015-05-29 | 1d → 3d | 100% → 33% |  |  |
| 12 | Analyse der Inhalte der aktuellen RZ-Webseite | 2015-06-15 A → 2015-06-01 A (-14d) | 2015-06-26 A → 2015-06-05 A (-21d) | 2w → 5d |  |  |  |
| 13 | Piwik-Analyse |  | 2015-06-26 A → 2015-06-19 A (-7d) | 2w → 5d |  |  |  |
| 14 | Contextual Inquiry Studierende (Vorbereitung + Durchführung) | 2015-06-15 A → 2015-06-22 A (+7d) | 2015-06-26 A → 2015-07-03 A (+7d) | 2w → 10d |  |  | was named Contextual Inquiry (Studierende + Mitarbeiter) |
| 15 | Erstellung des SRS-Templates | 2015-06-29 A → 2015-07-06 A (+7d) |  | 2w → 5d |  |  | resources Häring, Huth → Häring, Vogl |
| 16 | Besprechung und Verbesserung des SRS-Templats |  |  | 1w → 5d |  |  |  |
| 18 | Erstellung des Fragebogens | 2015-07-27 A → 2015-07-28 A (+1d) |  | 2w → 9d |  |  |  |
| 19 | Überarbeitung des Fragebogens |  |  | 1w → 5d |  |  |  |
| 20 | Recherche über Online-Cardsorting |  | 2015-08-19 A → 2015-08-18 A (-1d) | 3d → 2d |  |  |  |
| 21 | Vorbereitung des Online-Cardsorting | 2015-08-24 A → 2015-08-19 A (-5d) | 2015-08-28 A → 2015-08-21 A (-7d) | 1w → 3d |  |  |  |
| 25 | Zusammenfassung und Dokumentation der Ergebnisse der Anforderungsanalyse |  |  |  |  |  | was named Zusammenfassung der bisher erlangten Ergebnisse; resources Alle Teammitglieder → Bauer, Häring, Huth |
| 28 | Erarbeitung eines neuen Konzepts |  |  |  |  |  | resources Alle Teammitglieder → Bauer, Häring |
| 29 | Implementierung des neuen Konzepts mit Hilfe von Imperia |  |  |  |  | 28 → none | resources Alle Teammitglieder → Bauer, Häring |
| 31 | **Test des Protoypen** | 2015-09-14 → 2015-09-10 (-4d) | 2015-09-30 → 2015-09-25 (-5d) |  |  |  |  |
| 32 | Erstellung der Testszenarien | 2015-09-14 → 2015-09-10 (-4d) | 2015-09-15 → 2015-09-11 (-4d) |  |  |  |  |
| 34 | Durchführung der Tests | 2015-09-16 → 2015-09-15 (-1d) | 2015-09-18 → 2015-09-16 (-2d) | 3d → 2d |  | 32 → none |  |
| 35 | Auswertung der Tets | 2015-09-21 → 2015-09-18 (-3d) | 2015-09-22 → 2015-09-18 (-4d) | 2d → 1d |  | 34 → none | resources Huth, Vogl → Bauer, Häring |
| 36 | Besprechung der Ergebnisse | 2015-09-23 → 2015-09-21 (-2d) | 2015-09-23 → 2015-09-21 (-2d) |  |  | 35 → none |  |
| 37 | Überarbeitung des Prototypen | 2015-09-24 → 2015-09-22 (-2d) | 2015-09-25 → 2015-09-24 (-1d) | 2d → 3d |  | 36 → none |  |
| 42 | Fertigstellung der Projekt-Dokumentation | 2015-09-28 → 2015-09-29 (+1d) | 2015-09-29 → 2015-09-30 (+1d) |  |  | 37 → none | was named Fertigstellung der Dokumente |
| 43 | Projektabgabe |  |  |  |  | 42 → none |  |

## Version 3 (saved 2015-09-01)

Note of the change: Update Projektplan nach Besprechung

Last finish stays 2015-09-30.

Changed:

| ID | Task | Other |
| --- | --- | --- |
| 35 | Auswertung der Tests | was named Auswertung der Tets |

## Version 4 (saved 2015-09-06)

Note of the change: Update des Projektplans + Umbenennung (Top 10 zu Top 5)

Last finish stays 2015-09-30.

Added:

| ID | Task | Duration | Start | Finish | Resources |
| --- | --- | --- | --- | --- | --- |
| 25 | Auswertung der Piwik-Analyse und Dokumentation der Ergebnisse | 5d | 2015-08-31 | 2015-09-04 | Bauer |

Removed: 25 Zusammenfassung und Dokumentation der Ergebnisse der Anforderungsanalyse

Changed:

| ID | Task | Start | Finish | Duration | Complete | Other |
| --- | --- | --- | --- | --- | --- | --- |
| 6 | **Anforderungsanalyse** |  |  |  | 78% → 70% |  |
| 22 | Auswertung des Fragebogens und Dokumentation der Ergebnisse |  | 2015-09-01 → 2015-09-04 (+3d) | 2d → 5d |  | was named Auswertung des Fragebogens; resources Huth, Vogl → Huth |
| 23 | Auswertung des Card Sortings und Dokumentation der Ergebnisse |  | 2015-09-01 → 2015-09-04 (+3d) | 2d → 5d |  | was named Auswertung des Card Sortings; resources Bauer, Häring → Häring |
| 24 | Erstellen von Personas und Szenarien | 2015-09-02 → 2015-08-31 (-2d) |  | 3d → 5d |  |  |
